# DevPlan

Schedule from MS Project, 2010-08-09 to 2011-05-31, A marks actual dates.

## Calendars

- Standard: Mon-Fri 08:00-12:00, 13:00-17:00; Sat-Sun off. Exceptions (off unless hours are given): 2010-12-31 (New Year, recurring), 2011-01-03 (New Year 2011), 2011-01-07 (Cristmas).

## Resources

| Resource |
| --- |
| Maxim Sukhovarov |
| Viktor Gritsay |
| Anatoliy Lokshin |
| Julia Kuchmai |
| Evgeniy Oktyabrev |
| QA1 |
| Alexander Sirikov |
| Boris Sokolov |

## Schedule

| ID | WBS | Task | Type | Duration | Start | Finish | Predecessors | Complete | Remaining | Total slack | Free slack | Constraint | Resources | Work | Actual work |
| --- | --- | --- | --- | --- | --- | --- | --- | --- | --- | --- | --- | --- | --- | --- | --- |
| 1 | 1 | **Phase 1** |  | 60d? | 2010-08-16 A | 2010-11-05 |  | 25% | 45.26d? | 1d | 0d |  |  | 2151.12h | 676h |
| 2 | 1.1 | **Infrastructure development** |  | 51d? | 2010-08-25 | 2010-11-03 |  |  |  | 3d |  |  |  | 434h |  |
| 3 | 1.1.1 | Creating specification and design for general subsystem interfaces |  | 7d | 2010-08-25 | 2010-09-02 |  |  |  | 4d | 1d | start no earlier than 2010-08-25 | Maxim Sukhovarov | 56h |  |
| 4 | 1.1.2 | Generalizing subsystem interfaces |  | 4d | 2010-09-06 | 2010-09-09 | 3 |  |  | 3d | 0d | finish no earlier than 2010-09-09 | Maxim Sukhovarov | 32h |  |
| 5 | 1.1.3 | Creating specification and design for configuration subsystem |  | 7d | 2010-08-25 | 2010-09-02 |  |  |  | 7d | 0d | start no earlier than 2010-08-25 | Viktor Gritsay | 56h |  |
| 6 | 1.1.4 | Configuration subsystem development |  | 5d | 2010-09-03 | 2010-09-09 | 5 |  |  | 7d | 0d | finish no earlier than 2010-09-09 | Viktor Gritsay | 40h |  |
| 7 | 1.1.5 | Configuration testing & bugfixing |  | 9d | 2010-09-10 | 2010-09-22 | 6 |  |  | 31d | 0d | finish no earlier than 2010-09-13 | Viktor Gritsay | 72h |  |
| 8 | 1.1.6 | Logging errors |  | 1d | 2010-08-25 | 2010-08-25 |  |  |  | 18d | 0d | start no earlier than 2010-08-25 | Anatoliy Lokshin | 8h |  |
| 9 | 1.1.7 | Creating specification for exceptions subsystem |  | 1d | 2010-08-26 | 2010-08-26 | 8 |  |  | 43d | 0d |  | Anatoliy Lokshin | 8h |  |
| 10 | 1.1.8 | Exceptions subsystem development |  | 4d | 2010-08-27 | 2010-09-01 | 9 |  |  | 43d | 0d |  | Anatoliy Lokshin | 32h |  |
| 11 | 1.1.9 | Email sending infrastructure development |  | 1d | 2010-09-02 | 2010-09-02 | 10 |  |  | 43d | 3d |  | Anatoliy Lokshin | 8h |  |
| 12 | 1.1.10 | Framework general configuration development |  | 4d | 2010-09-08 | 2010-09-13 | 11 |  |  | 40d |  | finish no earlier than 2010-09-13 | Anatoliy Lokshin | 32h |  |
| 13 | 1.1.11 | Design review session 1 |  | 1d | 2010-08-30 | 2010-08-30 |  |  |  | 49.75d | 0d | start no earlier than 2010-08-30 | Anatoliy Lokshin; Maxim Sukhovarov; Viktor Gritsay; Julia Kuchmai; Evgeniy Oktyabrev | 40h |  |
| 14 | 1.1.12 | Design review session 2 |  | 2h | 2010-08-31 | 2010-08-31 | 13 |  |  | 49.75d |  |  | Anatoliy Lokshin; Maxim Sukhovarov; Viktor Gritsay; Julia Kuchmai; Evgeniy Oktyabrev | 10h |  |
| 15 | 1.1.13 | Discover ILMerge |  | 2d | 2010-09-23 | 2010-09-24 | 7 |  |  | 31d |  | start no earlier than 2010-09-21 | Viktor Gritsay | 16h |  |
| 16 | 1.1.14 | Documenting of the errors logger |  | 3d? | 2010-11-01 | 2010-11-03 |  |  |  | 3d |  | start no earlier than 2010-11-01 | Anatoliy Lokshin | 24h |  |
| 17 | 1.2 | Test application |  | 18d | 2010-09-06 A | 2010-09-29 |  | 23% | 13.82d | 28d |  | finish no earlier than 2010-09-17 | Julia Kuchmai; Viktor Gritsay [10%] | 53.92h | 28.8h |
| 18 | 1.3 | Create a build script |  | 1d | 2010-09-10 | 2010-09-10 |  |  |  | 6d | 0d | finish no earlier than 2010-09-10 | Maxim Sukhovarov | 8h |  |
| 19 | 1.4 | **Security FW v 0.5 testing** |  | 32d? | 2010-08-16 A | 2010-09-29 A |  | 100% |  |  |  |  |  | 319.2h | 319.2h |
| 20 | 1.4.1 | Test documentation and test data preparation (SFW v 0.5) |  | 12d? | 2010-08-25 A | 2010-09-09 A |  | 100% |  |  |  | start no earlier than 2010-08-25 | Julia Kuchmai; Evgeniy Oktyabrev | 192h | 192h |
| 21 | 1.4.2 | Testing environment preparation |  | 9d | 2010-09-01 A | 2010-09-13 A |  | 100% |  |  |  | start no earlier than 2010-09-01 | Julia Kuchmai [10%] | 7.2h | 7.2h |
| 22 | 1.4.3 | Encoder subsystem testing |  | 2d? | 2010-09-20 A | 2010-09-21 A | 21, 20 | 100% |  |  |  | start no earlier than 2010-09-20 | Julia Kuchmai | 16h | 16h |
| 23 | 1.4.4 | Decoder subsystem testing |  | 3d? | 2010-09-24 A | 2010-09-28 A | 20, 21 | 100% |  |  |  | start no earlier than 2010-09-24 | Julia Kuchmai | 24h | 24h |
| 24 | 1.4.5 | Detector subsystem testing |  | 4d? | 2010-08-16 A | 2010-08-19 A |  | 100% |  |  |  |  | Evgeniy Oktyabrev; Julia Kuchmai | 64h | 64h |
| 25 | 1.4.6 | Validator subsystem testing |  | 2d? | 2010-09-27 A | 2010-09-28 A | 20, 21 | 100% |  |  |  | start no earlier than 2010-09-26 | Evgeniy Oktyabrev | 16h | 16h |
| 26 | 1.4.7 | Object Reference Mapper subsystem testing | milestone | 0d | 2010-09-29 A | 2010-09-29 A | 20, 21, 25 | 100% |  |  |  | start no earlier than 2010-09-29 | Evgeniy Oktyabrev |  |  |

| ID | WBS | Task | Type | Duration | Start | Finish | Predecessors | Complete | Remaining | Total slack | Free slack | Constraint | Resources | Work | Actual work |
| --- | --- | --- | --- | --- | --- | --- | --- | --- | --- | --- | --- | --- | --- | --- | --- |
| 27 | 1.5 | **Security monitor subsystem** |  | 36d? | 2010-09-10 A | 2010-10-29 |  | 10% | 32.4d? | 6d |  |  |  | 440h | 80h |
| 28 | 1.5.1 | Security monitor subsystem analyses |  | 1d | 2010-09-10 | 2010-09-10 | 4 |  |  | 3d | 0d | start no earlier than 2010-08-18 | Anatoliy Lokshin | 8h |  |
| 29 | 1.5.2 | Creating specification and design for Security monitor subsystem |  | 3d | 2010-09-13 | 2010-09-15 | 28 |  |  | 3d | 0d | start no earlier than 2010-09-09 | Anatoliy Lokshin | 24h |  |
| 30 | 1.5.3 | Security monitor infrastructure base (data objects) development |  | 1d | 2010-09-16 | 2010-09-16 | 4, 6, 8, 29 |  |  | 3d | 0d |  | Anatoliy Lokshin | 8h |  |
| 31 | 1.5.4 | Security monitor logging infrastructure development |  | 3d | 2010-09-17 | 2010-09-21 | 30 |  |  | 3d | 0d |  | Anatoliy Lokshin | 24h |  |
| 32 | 1.5.5 | Log writer configuration development |  | 3d | 2010-09-22 | 2010-09-24 | 31 |  |  | 3d | 0d |  | Anatoliy Lokshin | 24h |  |
| 33 | 1.5.6 | Database log writers development |  | 3d | 2010-09-29 | 2010-10-01 | 34 |  |  | 3d | 0d |  | Anatoliy Lokshin | 24h |  |
| 34 | 1.5.7 | File log writer development |  | 2d | 2010-09-27 | 2010-09-28 | 32 |  |  | 3d | 0d |  | Anatoliy Lokshin | 16h |  |
| 35 | 1.5.8 | Security policy engine infrastructure development |  | 3d | 2010-10-04 | 2010-10-06 | 33 |  |  | 3d | 0d |  | Anatoliy Lokshin | 24h |  |
| 36 | 1.5.9 | Security policy base configuration development (policy sequence) | milestone | 0d | 2010-10-06 | 2010-10-06 | 35 |  |  | 3d | 0d |  | Anatoliy Lokshin |  |  |
| 37 | 1.5.10 | Security polcy rules development (4 types) |  | 1d | 2010-10-07 | 2010-10-07 | 36 |  |  | 7d | 1d |  | Anatoliy Lokshin | 8h |  |
| 38 | 1.5.11 | Security policies configuration development |  | 2d | 2010-10-07 | 2010-10-08 | 36 |  |  | 3d | 0d |  | Anatoliy Lokshin | 16h |  |
| 39 | 1.5.12 | Unit tests development |  | 3d | 2010-10-11 | 2010-10-13 | 38 |  |  | 3d | 0d |  | Anatoliy Lokshin | 24h |  |
| 40 | 1.5.13 | Test documentation and test data preparation |  | 5d? | 2010-10-18 A | 2010-10-22 A |  | 100% |  |  |  | start no earlier than 2010-10-18 | Evgeniy Oktyabrev; Julia Kuchmai | 80h | 80h |
| 41 | 1.5.14 | Testing & bugfixing |  | 15d? | 2010-10-11 | 2010-10-29 | 33, 38, 37 |  |  | 6d |  | start no earlier than 2010-10-08 | Anatoliy Lokshin | 120h |  |
| 42 | 1.5.15 | Security monitor API documenting |  | 5d? | 2010-10-14 | 2010-10-20 | 39 |  |  | 3d | 0d | start no earlier than 2010-09-30 | Anatoliy Lokshin | 40h |  |
| 43 | 1.6 | **Processor subsystem** |  | 55d? | 2010-08-19 A | 2010-11-03 |  | 15% | 46.91d? | 3d |  |  |  | 272h | 40h |
| 44 | 1.6.1 | Processor subsystem analyses |  | 1d | 2010-08-19 | 2010-08-19 |  |  |  | 35d | 32d | start no earlier than 2010-08-19 | Anatoliy Lokshin | 8h |  |
| 45 | 1.6.2 | Creating specification and design for Processor subsystem |  | 4d | 2010-10-05 | 2010-10-08 | 44, 29 |  |  | 3d | 0d | start no earlier than 2010-10-05 | Viktor Gritsay | 32h |  |
| 46 | 1.6.3 | Processor infrastructure base development |  | 4d | 2010-10-11 | 2010-10-14 | 45 |  |  | 3d | 0d |  | Viktor Gritsay | 32h |  |
| 47 | 1.6.4 | Processor configuration development |  | 7d | 2010-10-15 | 2010-10-25 | 4, 6, 8, 46 |  |  | 3d | 0d |  | Viktor Gritsay | 56h |  |
| 48 | 1.6.5 | Unit tests development |  | 2d | 2010-10-26 | 2010-10-27 | 47 |  |  | 4d | 0d |  | Viktor Gritsay | 16h |  |
| 49 | 1.6.6 | Testing documentation preparation |  | 5d? | 2010-10-11 A | 2010-10-15 A |  | 100% |  |  |  | start no earlier than 2010-10-11 | Julia Kuchmai | 40h | 40h |
| 50 | 1.6.7 | Testing and bugfixing |  | 7d? | 2010-10-26 | 2010-11-03 | 47 |  |  | 3d |  |  | Viktor Gritsay | 56h |  |
| 51 | 1.6.8 | Processor subsystem documenting |  | 4d? | 2010-10-28 | 2010-11-02 | 48 |  |  | 4d |  |  | Viktor Gritsay | 32h |  |

| ID | WBS | Task | Duration | Start | Finish | Predecessors | Complete | Remaining | Total slack | Free slack | Constraint | Resources | Work | Actual work |
| --- | --- | --- | --- | --- | --- | --- | --- | --- | --- | --- | --- | --- | --- | --- |
| 52 | 1.7 | **XSS detector** | 40d? | 2010-09-13 A | 2010-11-05 |  | 14% | 34.39d? | 1d |  |  |  | 464h | 128h |
| 53 | 1.7.1 | Research for XSS detection solutions | 8d | 2010-09-13 | 2010-09-22 | 4, 18 |  |  | 6d | 3d | start no earlier than 2010-08-25 | Maxim Sukhovarov | 64h |  |
| 54 | 1.7.2 | Creating specification and design for XSS detector v2. | 8d | 2010-09-28 | 2010-10-07 | 53 |  |  | 3d | 0d | finish no earlier than 2010-10-07 | Maxim Sukhovarov | 64h |  |
| 55 | 1.7.3 | XSS detector v2 development | 10d | 2010-10-08 | 2010-10-21 | 54 |  |  | 3d | 0d |  | Maxim Sukhovarov | 80h |  |
| 56 | 1.7.4 | Unit tests development | 2d | 2010-10-22 | 2010-10-25 | 55 |  |  | 3d | 0d |  | Maxim Sukhovarov | 16h |  |
| 57 | 1.7.5 | Testing documentation updating | 8d? | 2010-10-22 A | 2010-11-02 A | 55 | 100% |  |  |  | start no earlier than 2010-09-27 | Julia Kuchmai; Evgeniy Oktyabrev | 128h | 128h |
| 58 | 1.7.6 | Configuring processor engine for XSS detector | 7d? | 2010-10-26 | 2010-11-03 | 56 |  |  | 3d |  |  |  |  |  |
| 59 | 1.7.7 | XSS detector v2 testing & fixing issues | 14d? | 2010-10-19 | 2010-11-05 |  |  |  | 1d |  | start no earlier than 2010-10-19 | Maxim Sukhovarov | 112h |  |
| 60 | 1.8 | Regression testing | 10d? | 2010-10-21 A | 2010-11-03 A | 42 | 100% |  |  |  |  | Julia Kuchmai | 80h | 80h |
| 61 | 1.9 | Bugfixing | 10d? | 2010-10-21 | 2010-11-03 | 42 |  |  | 3d |  |  | Anatoliy Lokshin | 80h |  |
| 62 | 2 | Test management | 151d? | 2010-09-06 A | 2011-04-07 |  | 27% | 110d? | 37d |  | start no earlier than 2010-09-06 | Julia Kuchmai [20%] | 208.8h | 32.8h |
| 63 | 3 | Team management | 150d? | 2010-08-09 | 2011-03-09 |  |  |  | 58d |  | start no earlier than 2010-08-09 | Anatoliy Lokshin | 1200h |  |
| 64 | 4 | **Phase 2** | 51d? | 2010-11-08 A | 2011-01-20 | 1 | 19% | 41.22d? | 0d |  |  |  | 2258.4h | 443.72h |
| 65 | 4.1 | Tasks list review & estimations | 5d? | 2010-11-08 | 2010-11-12 |  |  |  | 1d | 0d |  | Anatoliy Lokshin; Maxim Sukhovarov; Viktor Gritsay | 120h |  |
| 66 | 4.2 | **Decoder subsystem** | 19d? | 2010-11-16 | 2010-12-10 | 65 |  |  | 0d |  |  |  | 304h |  |
| 67 | 4.2.1 | Gathering requirements and creating specifications and design for decoders | 9d | 2010-11-16 | 2010-11-26 |  |  |  | 0d |  | finish no earlier than 2010-11-26 | Maxim Sukhovarov; Anatoliy Lokshin | 144h |  |
| 68 | 4.2.2 | Rework decoder subsystem according to new design | 2d | 2010-11-22 | 2010-11-23 |  |  |  | 10d | 0d | start no earlier than 2010-11-21 | Anatoliy Lokshin | 16h |  |
| 69 | 4.2.3 | CSS decoder | 1d | 2010-11-24 | 2010-11-24 | 68 |  |  | 10d | 0d | start no earlier than 2010-11-23 | Anatoliy Lokshin | 8h |  |
| 70 | 4.2.4 | HTML decoder | 1d | 2010-11-25 | 2010-11-25 | 69 |  |  | 10d | 0d |  | Anatoliy Lokshin | 8h |  |
| 71 | 4.2.5 | XML decoder | 1d | 2010-11-26 | 2010-11-26 | 70 |  |  | 10d |  |  | Anatoliy Lokshin | 8h |  |
| 72 | 4.2.6 | JavaScript decoder | 3d | 2010-11-29 | 2010-12-01 | 67 |  |  | 0d |  |  | Maxim Sukhovarov | 24h |  |
| 73 | 4.2.7 | VB script decoder | 3d | 2010-12-02 | 2010-12-06 | 67, 72 |  |  | 0d |  |  | Maxim Sukhovarov | 24h |  |
| 74 | 4.2.8 | Base 64 enhanced decoder | 3d | 2010-12-07 | 2010-12-09 | 67, 73 |  |  | 0d |  | start no earlier than 2010-11-25 | Maxim Sukhovarov | 24h |  |
| 75 | 4.2.9 | Null character sanitizer | 1d? | 2010-12-10 | 2010-12-10 | 74 |  |  | 0d |  |  | Maxim Sukhovarov | 8h |  |
| 76 | 4.2.10 | GZIP decoder | 1d | 2010-12-06 | 2010-12-06 | 67, 191 |  |  | 0d |  |  | Anatoliy Lokshin | 8h |  |
| 77 | 4.2.11 | LDAP edcoder | 1d | 2010-12-07 | 2010-12-07 | 76 |  |  | 0d |  |  | Anatoliy Lokshin | 8h |  |
| 78 | 4.2.12 | Documenting Decoder subsystem | 3d | 2010-12-08 | 2010-12-10 | 77 |  |  | 0d |  |  | Anatoliy Lokshin | 24h |  |

| ID | WBS | Task | Duration | Start | Finish | Predecessors | Total slack | Free slack | Constraint | Resources | Work |
| --- | --- | --- | --- | --- | --- | --- | --- | --- | --- | --- | --- |
| 79 | 4.3 | **Extend XSS detector possibilities** | 7d? | 2010-12-13 | 2010-12-21 | 66 | 0d |  |  | Maxim Sukhovarov | 112h |
| 80 | 4.3.1 | Add checking for VB scripts | 3d? | 2010-12-13 | 2010-12-15 |  | 0d |  |  | Maxim Sukhovarov | 24h |
| 81 | 4.3.2 | Add checks for obfuscation | 4d? | 2010-12-16 | 2010-12-21 | 80 | 0d |  |  | Maxim Sukhovarov | 32h |
| 82 | 4.4 | Determines insufficient security policy rules | 0.5d | 2010-11-18 | 2010-11-18 | 87 | 39d | 0d |  | Anatoliy Lokshin | 4h |
| 83 | 4.5 | Update requirements & design documents | 1d | 2010-11-19 | 2010-11-19 | 82 | 41d |  |  |  |  |
| 84 | 4.6 | **Extend Security Monitor possibilities** | 6d | 2010-12-13 | 2010-12-20 | 157, 66 | 1d | 0d |  | Anatoliy Lokshin | 88h |
| 85 | 4.6.1 | Implement new security policy rules | 5d | 2010-12-13 | 2010-12-17 |  | 1d | 0d |  | Anatoliy Lokshin | 40h |
| 86 | 4.6.2 | Update Security Monitor manual | 1d | 2010-12-20 | 2010-12-20 | 85 | 1d |  |  |  |  |
| 87 | 4.7 | Gathering requirements and creating specifications for validators | 3.5d | 2010-11-15 | 2010-11-18 | 65 | 39d | 0d | start no earlier than 2010-11-15 | Anatoliy Lokshin | 28h |
| 88 | 4.8 | **Validator subsystem** | 6d? | 2010-12-22 | 2010-12-29 | 79, 84 | 0d |  |  |  | 44h |
| 89 | 4.8.1 | Basic int validator | 1d? | 2010-12-22 | 2010-12-22 |  | 0d |  |  | Anatoliy Lokshin | 8h |
| 90 | 4.8.2 | Basic long validator | 0.5d | 2010-12-23 | 2010-12-23 | 89 | 0d |  |  | Anatoliy Lokshin | 4h |
| 91 | 4.8.3 | Basic double validator | 0.5d | 2010-12-23 | 2010-12-23 | 90 | 4d |  |  | Anatoliy Lokshin | 4h |
| 92 | 4.8.4 | Printable string validator | 0.5d | 2010-12-23 | 2010-12-23 | 90 | 0d |  |  | Anatoliy Lokshin | 4h |
| 93 | 4.8.5 | Credit card number validator | 0.4d | 2010-12-24 | 2010-12-24 | 92 | 0d |  |  | Anatoliy Lokshin | 3.2h |
| 94 | 4.8.6 | Hexadecimal string validator | 0.1d | 2010-12-24 | 2010-12-24 | 93 | 0d |  |  | Anatoliy Lokshin | 0.8h |
| 95 | 4.8.7 | Date string validator | 0.5d | 2010-12-24 | 2010-12-24 | 94 | 0d |  |  | Anatoliy Lokshin | 4h |
| 96 | 4.8.8 | Base 64 validator | 0.5d? | 2010-12-27 | 2010-12-27 | 95 | 0d |  |  |  |  |
| 97 | 4.8.9 | Basic string validator | 0.5d? | 2010-12-27 | 2010-12-27 | 96 | 0d |  |  |  |  |
| 98 | 4.8.10 | Pattern string validator | 0.5d? | 2010-12-28 | 2010-12-28 | 97 | 1.5d |  |  |  |  |
| 99 | 4.8.11 | Documenting Validator subsystem | 2d? | 2010-12-28 | 2010-12-29 | 97 | 0d |  |  | Anatoliy Lokshin | 16h |
| 100 | 4.9 | **Configuration subsysten improvements** | 28d | 2010-11-15 | 2010-12-22 | 65 | 5d | 0d |  | Viktor Gritsay | 448h |
| 101 | 4.9.1 | Rework the design document | 4d | 2010-11-15 | 2010-11-18 |  | 5d | 0d |  | Viktor Gritsay | 32h |
| 102 | 4.9.2 | Create and apply custom attributes enforcing configuration rules | 10d | 2010-11-19 | 2010-12-02 | 101 | 5d | 0d |  | Viktor Gritsay | 80h |
| 103 | 4.9.3 | Create an XML configuration files serializer | 5d | 2010-12-03 | 2010-12-09 | 102 | 5d | 0d |  | Viktor Gritsay | 40h |
| 104 | 4.9.4 | Testing & bugfixing | 9d | 2010-12-10 | 2010-12-22 | 103 | 5d |  |  | Viktor Gritsay | 72h |

| ID | WBS | Task | Duration | Start | Finish | Predecessors | Complete | Remaining | Total slack | Free slack | Constraint | Resources | Work | Actual work |
| --- | --- | --- | --- | --- | --- | --- | --- | --- | --- | --- | --- | --- | --- | --- |
| 105 | 4.10 | **Processor subsystem improvements** | 9d? | 2010-12-23 | 2011-01-06 | 100 |  |  | 9d |  |  | Viktor Gritsay | 144h |  |
| 106 | 4.10.1 | Document changes to the Processor subsystem | 3d? | 2010-12-23 | 2010-12-27 |  |  |  | 9d | 0d |  | Viktor Gritsay | 24h |  |
| 107 | 4.10.2 | Create new Processor rule classes | 3d? | 2010-12-28 | 2010-12-30 | 106 |  |  | 9d | 0d |  | Viktor Gritsay | 24h |  |
| 108 | 4.10.3 | Update Processor subsystem manual | 3d? | 2011-01-04 | 2011-01-06 | 107 |  |  | 9d |  |  | Viktor Gritsay | 24h |  |
| 109 | 4.11 | Prepare performance tests | 2d? | 2010-12-21 | 2010-12-22 | 84 |  |  | 5d |  |  | Anatoliy Lokshin | 16h |  |
| 110 | 4.12 | Testing & bugfixing | 13d | 2010-12-30 | 2011-01-20 | 66, 79, 84, 88, 100, 109 |  |  | 0d |  |  |  |  |  |
| 111 | 4.13 | **Testing tasks** | 46d? | 2010-11-15 A | 2011-01-20 |  | 58% | 19.2d? | 0d |  |  | Julia Kuchmai | 950.4h | 443.72h |
| 112 | 4.13.1 | Gathering requirements for XSS and decoders | 2d | 2010-11-15 A | 2010-11-16 A |  | 100% |  |  |  | start no earlier than 2010-11-15 | Julia Kuchmai | 16h | 16h |
| 113 | 4.13.2 | Introduction for new QA | 5d | 2010-11-17 A | 2010-11-23 A | 112 | 100% |  |  |  |  | Julia Kuchmai; QA1 | 80h | 80h |
| 114 | 4.13.3 | Project documentation review | 2d | 2010-11-24 A | 2010-11-25 A |  | 100% |  |  |  | start no earlier than 2010-11-22 | QA1 | 16h | 16h |
| 115 | 4.13.4 | Test Plan | 2d | 2010-12-02 A | 2010-12-03 A |  | 100% |  |  |  | start no earlier than 2010-11-26 | Julia Kuchmai | 16h | 16h |
| 116 | 4.13.5 | Review Decoder Requirements | 3h | 2010-11-24 A | 2010-11-24 A | 67 | 100% |  |  |  | start no earlier than 2010-11-24 | Julia Kuchmai | 3h | 3h |
| 117 | 4.13.6 | Review Decoder Design | 2h | 2010-11-24 A | 2010-11-24 A | 67 | 100% |  |  |  | start no earlier than 2010-11-24 | Julia Kuchmai | 2h | 2h |
| 118 | 4.13.7 | Review Validator Requirements and Design | 3h | 2010-11-25 A | 2010-11-25 A | 87 | 100% |  |  |  | start no earlier than 2010-11-19 | Julia Kuchmai | 3h | 3h |
| 119 | 4.13.8 | Review Configuration Requirements | 2h | 2010-11-25 A | 2010-11-25 A | 101 | 100% |  |  |  | start no earlier than 2010-11-17 | Julia Kuchmai | 2h | 2h |
| 120 | 4.13.9 | Review Processor Requirements | 2h | 2010-12-27 | 2010-12-27 |  |  |  | 12.75d | 5.75d | start no earlier than 2010-12-27 | Julia Kuchmai | 2h |  |
| 121 | 4.13.10 | Review Security Monitor Requirements and Design | 4h? | 2010-11-26 A | 2010-11-26 A |  | 100% |  |  |  | start no earlier than 2010-11-19 |  |  |  |
| 122 | 4.13.11 | Security monitor test cases update | 1d | 2011-01-12 | 2011-01-12 | 82 |  |  | 4d | 0d | start no earlier than 2011-01-12 | Julia Kuchmai | 8h |  |
| 123 | 4.13.12 | Security monitor testing | 2d? | 2011-01-13 | 2011-01-14 | 122, 85 |  |  | 4d |  | start no earlier than 2011-01-13 | Julia Kuchmai; QA1 | 32h |  |
| 124 | 4.13.13 | XSS test data preparation | 5d? | 2010-12-28 | 2011-01-05 |  |  |  | 9d | 0d | start no earlier than 2010-12-28 | Julia Kuchmai [10%]; QA1 | 44h |  |
| 125 | 4.13.14 | XSS Testing | 1d? | 2011-01-06 | 2011-01-06 | 124, 79 |  |  | 9d |  | start no earlier than 2010-12-29 | Julia Kuchmai [50%]; QA1 | 9.6h |  |
| 126 | 4.13.15 | Configuration test cases updating | 4h | 2011-01-04 | 2011-01-04 | 119, 101 |  |  | 10.5d | 0d | start no earlier than 2011-01-04 | Julia Kuchmai | 4h |  |
| 127 | 4.13.16 | Configuration testing | 1d? | 2011-01-04 | 2011-01-05 | 126, 102, 103 |  |  | 10.5d |  | start no earlier than 2010-12-02 | Julia Kuchmai; QA1 | 16h |  |
| 128 | 4.13.17 | Processor test cases updating | 1d? | 2011-01-06 | 2011-01-06 | 120 |  |  | 7d | 0d | start no earlier than 2011-01-06 | Julia Kuchmai; QA1 | 16h |  |
| 129 | 4.13.18 | Processor testing | 2d? | 2011-01-10 | 2011-01-11 | 128 |  |  | 7d |  | start no earlier than 2010-12-17 | Julia Kuchmai; QA1 | 32h |  |
| 130 | 4.13.19 | Decoder subsystem test data+test cases preparation | 6d? | 2010-12-06 A | 2010-12-17 A | 116, 117 | 100% |  |  |  | start no earlier than 2010-11-24 | Julia Kuchmai [50%]; QA1 | 60h | 60h |
| 131 | 4.13.20 | Decoder subsystem testing | 6d? | 2010-12-20 A | 2010-12-27 A | 130, 66 | 100% |  |  |  | start no earlier than 2010-12-15 | Julia Kuchmai; QA1 | 56h | 56h |
| 132 | 4.13.21 | Validator subsystem test cases and test data preparation | 5d? | 2010-12-10 A | 2011-01-12 | 118 | 80% | 1d? | 4d | 0d | start no earlier than 2010-12-10 | Julia Kuchmai [10%]; QA1 | 35.2h | 27.2h |
| 133 | 4.13.22 | Validator subsystem testing | 2d? | 2011-01-13 | 2011-01-14 | 132, 88 |  |  | 4d |  | start no earlier than 2011-01-10 | Julia Kuchmai [10%]; QA1 | 17.6h |  |
| 134 | 4.13.23 | Regression testing | 4d | 2011-01-17 | 2011-01-20 |  |  |  | 0d |  | start no earlier than 2011-01-17 | Julia Kuchmai; QA1 [50%] | 48h |  |
| 135 | 4.13.24 | Continuous Operation testing | 2d? | 2011-01-19 | 2011-01-20 |  |  |  | 0d |  | start no earlier than 2011-01-19 | Julia Kuchmai | 16h |  |
| 136 | 4.13.25 | ATM migration research | 3d? | 2010-11-26 A | 2010-11-30 A |  | 100% |  |  |  | start no earlier than 2010-11-19 | QA1; Julia Kuchmai | 48h | 48h |

| ID | WBS | Task | Duration | Start | Finish | Predecessors | Complete | Total slack | Free slack | Constraint | Resources | Work | Actual work |
| --- | --- | --- | --- | --- | --- | --- | --- | --- | --- | --- | --- | --- | --- |
| 137 | 5 | **Phase 2.5** | 21d? | 2011-01-21 | 2011-02-18 | 64 |  | 0d |  |  |  | 576h |  |
| 138 | 5.1 | Fixing remaning issues | 6d | 2011-01-21 | 2011-01-28 |  |  | 0d |  |  | Viktor Gritsay | 48h |  |
| 139 | 5.2 | Defining requirements, setting up environment | 6d | 2011-01-21 | 2011-01-28 |  |  | 0d |  |  | Anatoliy Lokshin | 48h |  |
| 140 | 5.3 | Unexpected issues with VMs | 1d? | 2011-01-31 | 2011-01-31 | 139, 138 |  | 12.5d | 0d |  | Anatoliy Lokshin; Viktor Gritsay; Boris Sokolov | 24h |  |
| 141 | 5.4 | Investigating new requirements | 5d | 2011-01-31 | 2011-02-04 | 139, 138 |  | 0d |  |  | Anatoliy Lokshin; Viktor Gritsay; Boris Sokolov | 120h |  |
| 142 | 5.5 | Creating design documents | 2d | 2011-02-02 | 2011-02-03 |  |  | 11d |  | start no earlier than 2011-02-02 | Anatoliy Lokshin; Viktor Gritsay; Boris Sokolov | 48h |  |
| 143 | 5.6 | Implementing MetraNet logger | 1d | 2011-02-01 | 2011-02-01 | 140 |  | 12.5d | 0d |  | Anatoliy Lokshin | 8h |  |
| 144 | 5.7 | Changing unit tests location | 4h | 2011-02-02 | 2011-02-02 | 143 |  | 12.5d |  |  | Anatoliy Lokshin | 4h |  |
| 145 | 5.8 | Migration MetraNet configuration loading to Security Framework | 3d? | 2011-02-07 | 2011-02-09 | 141 |  | 0d |  |  | Viktor Gritsay | 24h |  |
| 146 | 5.9 | Migration MetraNet configuration saving to Security Framework | 4d? | 2011-02-10 | 2011-02-15 | 145 |  | 0d |  |  | Viktor Gritsay | 32h |  |
| 147 | 5.10 | Migration MetraNet cryptography to Security Framework | 7d? | 2011-02-07 | 2011-02-15 | 141 |  | 3d |  |  | Anatoliy Lokshin; Boris Sokolov [50%] | 84h |  |
| 148 | 5.11 | Adding more debug logging to Security Framework | 3d? | 2011-02-07 | 2011-02-09 | 141 |  | 7d |  |  | Boris Sokolov | 24h |  |
| 149 | 5.12 | Testing and fixing issues | 3d? | 2011-02-16 | 2011-02-18 | 146 |  | 0d |  |  | Anatoliy Lokshin; Boris Sokolov; Viktor Gritsay | 72h |  |
| 150 | 5.13 | Performance testing | 5d | 2011-01-31 | 2011-02-04 |  |  | 10d |  | start no earlier than 2011-01-31 | Julia Kuchmai | 40h |  |
| 151 | 5.14 | **ATM migration** | 7.5d? | 2011-02-07 | 2011-02-16 |  |  | 2.5d |  |  |  |  |  |
| 152 | 5.14.1 | Templates updating for project | 2d? | 2011-02-07 | 2011-02-08 |  |  | 2.5d | 0d | start no earlier than 2011-02-07 |  |  |  |
| 153 | 5.14.2 | Phase1 test cases migration | 2d? | 2011-02-09 | 2011-02-10 | 152 |  | 48.5d | 0d |  |  |  |  |
| 154 | 5.14.3 | Phase2 test cases migration | 2d? | 2011-02-11 | 2011-02-14 | 153 |  | 48.5d | 0d | start no earlier than 2010-11-12 |  |  |  |
| 155 | 5.14.4 | Results migration | 1.5d? | 2011-02-15 | 2011-02-16 | 154 |  | 48.5d |  |  |  |  |  |
| 156 | 6 | Vacation | 8d | 2010-12-06 A | 2010-12-15 A |  | 100% |  |  | start no earlier than 2010-12-06 | Julia Kuchmai [90%] | 57.6h | 57.6h |
| 157 | 7 | Vacation | 5d | 2010-11-29 A | 2010-12-03 A |  | 100% |  |  | start no earlier than 2010-11-28 | Anatoliy Lokshin | 40h | 40h |
| 158 | 8 | Vacation | 5d? | 2011-02-21 | 2011-02-25 |  |  | 63d |  | start no earlier than 2011-02-21 | Viktor Gritsay | 40h |  |
| 159 | 9 | **Phase 3** | 30d? | 2011-02-21 | 2011-04-01 | 137 |  | 0d |  |  |  | 320h |  |
| 160 | 9.1 | Research sesurity issue testing tools & searching issues in MetraNet | 6d? | 2011-02-21 | 2011-02-28 |  |  | 0d |  |  | Anatoliy Lokshin; Boris Sokolov | 96h |  |
| 161 | 9.2 | Learning MetraTech systems | 5d? | 2011-02-21 | 2011-02-25 |  |  | 66d |  |  | Alexander Sirikov; Julia Kuchmai | 80h |  |
| 162 | 9.3 | Playing with AppScan setting | 2d? | 2011-03-01 | 2011-03-02 | 160 |  | 64d |  |  | Anatoliy Lokshin | 16h |  |
| 163 | 9.4 | Designing & estimating fixes for MetraNet security issues | 4d? | 2011-03-01 | 2011-03-04 | 160 |  | 62d |  |  | Anatoliy Lokshin; Boris Sokolov | 64h |  |
| 164 | 9.5 | Configuration system improvements | 3d? | 2011-02-28 | 2011-03-02 | 158 |  | 59d |  |  | Viktor Gritsay | 24h |  |
| 165 | 9.6 | Bugfixing | 5d? | 2011-03-03 | 2011-03-09 | 164 |  | 59d |  |  | Viktor Gritsay | 40h |  |
| 166 | 9.7 | Fixing security issues in MetraNet | 20d? | 2011-03-07 | 2011-04-01 | 163 |  | 42d |  |  |  |  |  |

| ID | WBS | Task | Duration | Start | Finish | Predecessors | Total slack | Constraint | Resources | Work |
| --- | --- | --- | --- | --- | --- | --- | --- | --- | --- | --- |
| 167 | 10 | **Phase 4** | 65d? | 2011-03-01 | 2011-05-30 | 160 | 0d |  |  |  |
| 168 | 10.1 | **Detector subsystem** | 65d? | 2011-03-01 | 2011-05-30 | 65 | 0d |  |  |  |
| 169 | 10.1.1 | Research for Encoding detection solutions | 5d? | 2011-03-01 | 2011-03-07 |  | 0d |  |  |  |
| 170 | 10.1.2 | Research for OS Command detection solutions | 5d? | 2011-03-08 | 2011-03-14 | 169 | 0d |  |  |  |
| 171 | 10.1.3 | Research for OS Shell Output detection solutions | 5d? | 2011-03-01 | 2011-03-07 |  | 0d |  |  |  |
| 172 | 10.1.4 | Research for Sell Code detection solutions | 5d? | 2011-03-08 | 2011-03-14 | 171 | 0d |  |  |  |
| 173 | 10.1.5 | Gathering requirements and creating specifications for detectors | 10d? | 2011-03-15 | 2011-03-28 | 169, 170, 171, 172 | 0d |  |  |  |
| 174 | 10.1.6 | Encoding detector | 15d? | 2011-03-29 | 2011-04-18 | 173 | 0d |  |  |  |
| 175 | 10.1.7 | OS Commands detector | 10d? | 2011-04-19 | 2011-05-02 | 173, 174 | 0d |  |  |  |
| 176 | 10.1.8 | OS Shell Output detector | 15d? | 2011-03-29 | 2011-04-18 | 173 | 0d |  |  |  |
| 177 | 10.1.9 | Shell Code detector | 10d? | 2011-04-19 | 2011-05-02 | 173, 176 | 0d |  |  |  |
| 178 | 10.1.10 | Testing & bugfixing | 20d? | 2011-05-03 | 2011-05-30 | 174, 175, 176, 177 | 0d |  |  |  |
| 179 | 10.2 | System account manager subsystem | 1d? | 2011-03-01 | 2011-03-01 |  | 64d |  |  |  |
| 180 | 10.3 | Security framework Administration | 1d? | 2011-03-01 | 2011-03-01 |  | 64d |  |  |  |
| 181 | 10.4 | Encoder subsystem | 1d? | 2011-03-01 | 2011-03-01 |  | 64d |  |  |  |
| 182 | 10.5 | Equalizer subsystem | 1d? | 2011-03-01 | 2011-03-01 |  | 64d |  |  |  |
| 183 | 10.6 | Sanitizer subsystem | 1d? | 2011-03-01 | 2011-03-01 |  | 64d |  |  |  |
| 184 | 10.7 | Access controller subsystem | 1d? | 2011-03-01 | 2011-03-01 |  | 64d |  |  |  |
| 185 | 10.8 | Encryption subsystem | 1d? | 2011-03-01 | 2011-03-01 |  | 64d |  |  |  |
| 186 | 10.9 | Password qualifier subsystem | 1d? | 2011-03-01 | 2011-03-01 |  | 64d |  |  |  |
| 187 | 11 | **Phase 5** | 1d? | 2011-05-31 | 2011-05-31 | 167 | 0d |  |  |  |
| 188 | 11.1 | Distributed security monitor | 1d? | 2011-05-31 | 2011-05-31 |  | 0d | start no earlier than 2010-11-15 |  |  |
| 189 | 11.2 | HTTP filters for the security processor | 1d? | 2011-05-31 | 2011-05-31 |  | 0d | start no earlier than 2010-11-15 |  |  |
| 190 | 11.3 | Enhancement for the security framework Administration Tool | 1d? | 2011-05-31 | 2011-05-31 |  | 0d | start no earlier than 2010-11-15 |  |  |
| 191 | 12 | Vacation | 5d? | 2010-11-29 | 2010-12-03 |  | 0d | start no earlier than 2010-11-29 | Anatoliy Lokshin | 40h |
| 192 | 13 | Vacation | 2d | 2010-10-05 | 2010-10-06 |  | 166d | start no earlier than 2010-10-05 | Maxim Sukhovarov | 16h |
| 193 | 14 | Vacation | 10d? | 2010-08-16 | 2010-08-27 |  | 194d |  | Viktor Gritsay | 80h |
| 194 | 15 | Vacation | 10d? | 2010-08-16 | 2010-08-27 |  | 194d |  | Alexander Sirikov | 80h |
